# Schedule

Schedule from MS Project, 2020-10-24 to 2020-12-11.
North Carolina State University

## Calendars

- Standard: Mon-Fri 08:00-12:00, 13:00-17:00; Sat-Sun off. Exceptions (off unless hours are given): 2020-10-24 08:00-12:00, 13:00-17:00 ([Unnamed]), 2020-10-31 to 2020-11-01 08:00-12:00, 13:00-17:00, 2020-11-07 to 2020-11-08 08:00-12:00, 13:00-17:00, 2020-11-14 08:00-12:00, 13:00-17:00, 2020-11-15 08:00-12:00, 13:00-17:00 ([Unnamed]), 2020-11-21 08:00-12:00, 13:00-17:00, 2020-11-22 to 2021-04-04 08:00-12:00, 13:00-17:00 (recurring).

## Schedule

| ID | WBS | Task | Type | Duration | Start | Finish | Predecessors | Total slack | Free slack | Constraint |
| --- | --- | --- | --- | --- | --- | --- | --- | --- | --- | --- |
| 1 | 1 | **Generation of Passive Layer** |  | 47.75d | 2020-10-24 08:00 | 2020-12-11 15:00 |  | 0d |  |  |
| 2 | 1.1 | Prepare mesh with screw |  | 0.5d | 2020-10-24 08:00 | 2020-10-24 12:00 |  | 0d |  | start no earlier than 2020-10-24 08:00 |
| 3 | 1.2 | Connect ss wire to ss screw |  | 0.5d | 2020-10-24 13:00 | 2020-10-24 17:00 | 2 | 0d |  |  |
| 4 | 1.3 | **Prepare rebar ends** |  | 1.5d | 2020-10-26 08:00 | 2020-10-27 12:00 |  | 0d |  |  |
| 5 | 1.3.1 | Spread epoxy on ends surface |  | 1d | 2020-10-26 08:00 | 2020-10-26 17:00 | 3 | 0d |  | start no earlier than 2020-10-26 08:00 |
| 6 | 1.3.2 | Place electroplatter tape |  | 0.25d | 2020-10-27 08:00 | 2020-10-27 10:00 | 5 | 0d |  |  |
| 7 | 1.3.3 | Place shrink tube |  | 0.25d | 2020-10-27 10:00 | 2020-10-27 12:00 | 6 | 0d |  |  |
| 8 | 1.4 | Cut small sample |  | 0.1d | 2020-10-26 08:00 | 2020-10-26 08:48 |  | 46.15d | 0d | start no earlier than 2020-10-26 08:00 |
| 9 | 1.5 | Insert mesh into PVC pipe |  | 0.25d | 2020-10-27 13:00 | 2020-10-27 15:00 | 7 | 0d |  |  |
| 10 | 1.6 | Insert rebar with spacers |  | 0.25d | 2020-10-27 15:00 | 2020-10-27 17:00 | 9 | 0d |  |  |
| 11 | 1.7 | Glue PVC connectors |  | 1d | 2020-10-28 08:00 | 2020-10-28 17:00 | 10 | 0d |  |  |
| 12 | 1.8 | Put sample inside the container |  | 0.5d | 2020-10-26 08:48 | 2020-10-26 13:48 | 8 | 46.15d |  |  |
| 13 | 1.9 | Prepare saturated solution |  | 0.25d | 2020-10-29 08:00 | 2020-10-29 10:00 | 11 | 0d |  |  |
| 14 | 1.10 | Pour in saturated solution |  | 0.25d | 2020-10-29 10:00 | 2020-10-29 12:00 | 13 | 0d |  |  |
| 15 | 1.11 | Close PVC plugs |  | 0.25d | 2020-10-29 13:00 | 2020-10-29 15:00 | 14 | 0d |  |  |
| 16 | 1.12 | Passive layer generation |  | 14d | 2020-10-29 15:00 | 2020-11-12 15:00 | 15 | 0d |  |  |
| 17 | 1.13 | PASSIVE LAYER GENERATED | milestone | 0d | 2020-11-12 15:00 | 2020-11-12 15:00 | 16 | 29d |  |  |
| 18 | 1.14 | Wait for specimens to dry |  | 1d | 2020-11-12 15:00 | 2020-11-13 15:00 | 16 | 0d |  |  |
| 19 | 1.15 | Make electric connections |  | 0.5d | 2020-11-13 15:00 | 2020-11-14 10:00 | 18 | 0d |  |  |
| 20 | 1.16 | do hole in PVC plugs |  | 0.5d | 2020-11-14 10:00 | 2020-11-14 15:00 | 19 | 0d |  |  |
| 21 | 1.17 | Power specimens |  | 0.5d | 2020-11-14 15:00 | 2020-11-15 10:00 | 20 | 0d |  |  |
| 22 | 1.18 | **CL=5% Tests** |  | 3d | 2020-11-22 15:00 | 2020-11-25 15:00 |  | 16d |  |  |
| 23 | 1.18.1 | CL=5% ready | milestone | 0d | 2020-11-22 15:00 | 2020-11-22 15:00 | 21FS+7.5d | 16d | 0d |  |
| 24 | 1.18.2 | Take CL=5% specimens out |  | 0.25d | 2020-11-22 15:00 | 2020-11-22 17:00 | 23 | 16d | 0d |  |
| 25 | 1.18.3 | Weight CL=5% specimens out |  | 0.25d | 2020-11-23 08:00 | 2020-11-23 10:00 | 24 | 16d | 0d |  |
| 26 | 1.18.4 | Veryfy intended corrosion level |  | 0.5d | 2020-11-23 10:00 | 2020-11-23 15:00 | 25 | 16d | 0d |  |
| 27 | 1.18.5 | Prepare specimen instrumentation |  | 1d | 2020-11-23 15:00 | 2020-11-24 15:00 | 26 | 16d | 0d |  |
| 28 | 1.18.6 | Perform Tension test |  | 0.5d | 2020-11-24 15:00 | 2020-11-25 10:00 | 27 | 16d | 0d |  |
| 29 | 1.18.7 | Perform BBT Tests |  | 0.5d | 2020-11-25 10:00 | 2020-11-25 15:00 | 28 | 16d |  |  |

| ID | WBS | Task | Type | Duration | Start | Finish | Predecessors | Total slack | Free slack |
| --- | --- | --- | --- | --- | --- | --- | --- | --- | --- |
| 30 | 1.19 | **CL=10% Tests** |  | 3d | 2020-11-30 10:00 | 2020-12-03 10:00 |  | 8.5d |  |
| 31 | 1.19.1 | CL=10% ready | milestone | 0d | 2020-11-30 10:00 | 2020-11-30 10:00 | 21FS+15d | 8.5d | 0d |
| 32 | 1.19.2 | Take CL=10% specimens out |  | 0.25d | 2020-11-30 10:00 | 2020-11-30 12:00 | 31 | 8.5d | 0d |
| 33 | 1.19.3 | Weight CL=10% specimens out |  | 0.25d | 2020-11-30 13:00 | 2020-11-30 15:00 | 32 | 8.5d | 0d |
| 34 | 1.19.4 | Veryfy intended corrosion level |  | 0.5d | 2020-11-30 15:00 | 2020-12-01 10:00 | 33 | 8.5d | 0d |
| 35 | 1.19.5 | Prepare specimen instrumentation |  | 1d | 2020-12-01 10:00 | 2020-12-02 10:00 | 34 | 8.5d | 0d |
| 36 | 1.19.6 | Perform Tension test |  | 0.5d | 2020-12-02 10:00 | 2020-12-02 15:00 | 35 | 8.5d | 0d |
| 37 | 1.19.7 | Perform BBT Tests |  | 0.5d | 2020-12-02 15:00 | 2020-12-03 10:00 | 36 | 8.5d |  |
| 38 | 1.20 | **CL=15% Tests** |  | 4d | 2020-12-07 15:00 | 2020-12-11 15:00 |  | 0d |  |
| 39 | 1.20.1 | CL=15% ready |  | 1d | 2020-12-07 15:00 | 2020-12-08 15:00 | 21FS+22.5d | 0d |  |
| 40 | 1.20.2 | Take CL=15% specimens out |  | 0.25d | 2020-12-08 15:00 | 2020-12-08 17:00 | 39 | 0d |  |
| 41 | 1.20.3 | Weight CL=15% specimens out |  | 0.25d | 2020-12-09 08:00 | 2020-12-09 10:00 | 40 | 0d |  |
| 42 | 1.20.4 | Veryfy intended corrosion level |  | 0.5d | 2020-12-09 10:00 | 2020-12-09 15:00 | 41 | 0d |  |
| 43 | 1.20.5 | Prepare specimen instrumentation |  | 1d | 2020-12-09 15:00 | 2020-12-10 15:00 | 42 | 0d |  |
| 44 | 1.20.6 | Perform Tension test |  | 0.5d | 2020-12-10 15:00 | 2020-12-11 10:00 | 43 | 0d |  |
| 45 | 1.20.7 | Perform BBT Tests |  | 0.5d | 2020-12-11 10:00 | 2020-12-11 15:00 | 44 | 0d |  |
